# 福莱特自研MES项目-南通推广

Schedule from a web Gantt chart, 2026-10-19 to 2027-01-22.
Saturdays and Sundays are off

## Schedule

| ID | WBS | Task | Duration | Start | Finish | Predecessors | Status |
| --- | --- | --- | --- | --- | --- | --- | --- |
| 2 | 1 | 硬件准备 | 25d | 2026-10-19 | 2026-11-20 |  | waiting |
| 3 | 2 | 项目启动会 | 1d | 2026-11-20 | 2026-11-20 |  | waiting |
| 4 | 3 | **培训** | 10d | 2026-11-16 | 2026-11-27 |  | waiting |
| 5 | 3.1 | 培训材料编写 | 5d | 2026-11-16 | 2026-11-20 |  | waiting |
| 6 | 3.2 | 系统培训 | 5d | 2026-11-23 | 2026-11-27 |  | waiting |
| 7 | 4 | **系统试运行** | 20d | 2026-11-16 | 2026-12-11 |  | waiting |
| 8 | 4.1 | 现场设备硬件确认 | 5d | 2026-11-23 | 2026-11-27 |  | waiting |
| 9 | 4.2 | 试运行环境搭建 | 5d | 2026-11-16 | 2026-11-20 |  | waiting |
| 10 | 4.3 | 试运行数据准备 | 10d | 2026-11-16 | 2026-11-27 |  | waiting |
| 11 | 4.4 | 系统试运行 | 10d | 2026-11-30 | 2026-12-11 |  | waiting |
| 12 | 4.5 | 功能优化 | 10d | 2026-11-30 | 2026-12-11 |  | waiting |
| 13 | 5 | **系统上线** | 40d | 2026-11-30 | 2027-01-22 |  | waiting |
| 14 | 5.1 | 正式环境部署 | 5d | 2026-11-30 | 2026-12-04 |  | waiting |
| 15 | 5.2 | 正式环境数据准备 | 5d | 2026-12-07 | 2026-12-11 | 14 | waiting |
| 16 | 5.3 | 正式上线 | 15d | 2026-12-14 | 2027-01-01 |  | waiting |
| 17 | 5.4 | 验收签字 | 15d | 2027-01-04 | 2027-01-22 | 16 | waiting |
